# Digital Dash Project Schedule

Schedule from MS Project, 2014-11-21 to 2015-06-05, A marks actual dates.

## Calendars

- Standard: Mon-Fri 08:00-12:00, 13:00-17:00; Sat-Sun off. Exceptions (off unless hours are given): 2015-01-01 to 2015-06-30 08:00-12:00, 13:00-17:00.

## Resources

| Resource |
| --- |
| Jaime |
| Sean |
| Noah |
| Chad |
| Rishal |
| Digital Dash Team |

## Schedule

| ID | WBS | Task | Type | Duration | Start | Finish | Predecessors | Complete | Remaining | Total slack | Constraint | Resources | Work | Actual work |
| --- | --- | --- | --- | --- | --- | --- | --- | --- | --- | --- | --- | --- | --- | --- |
| 1 | 1 | Project Introduction |  | 1.5d | 2014-11-21 A | 2014-11-24 A |  | 100% |  |  |  | Digital Dash Team | 12h | 12h |
| 2 | 2 | Create Project Wiki |  | 1d | 2014-11-21 A | 2014-11-21 A |  | 100% |  |  |  | Noah | 8h | 8h |
| 3 | 3 | **Project Research** |  | 31d | 2014-11-21 A | 2015-01-02 |  | 99% | 0d | 0d |  | Digital Dash Team | 2184h | 2136h |
| 4 | 3.1 | Microprocessor | manual | 25d | 2014-11-21 A | 2014-12-25 A |  | 100% |  |  |  | Chad; Sean | 400h | 400h |
| 5 | 3.2 | LCD Screens | manual | 25d | 2014-11-21 A | 2014-12-25 A |  | 100% |  |  |  | Jaime; Noah; Rishal | 600h | 600h |
| 6 | 3.3 | CAN | manual | 25d | 2014-11-21 A | 2014-12-25 A |  | 100% |  |  |  | Chad; Noah; Sean | 600h | 600h |
| 7 | 3.4 | LCD Screen Orientation | manual | 6d | 2014-12-28 A | 2015-01-02 A |  | 100% |  |  |  | Chad; Jaime; Rishal | 144h | 144h |
| 8 | 3.5 | GUI Layout | manual | 6d | 2014-12-28 A | 2015-01-02 A |  | 100% |  |  |  | Jaime | 48h | 48h |
| 9 | 3.6 | Enclosure | manual | 6d | 2014-12-28 A | 2015-01-02 A |  | 100% |  |  |  | Jaime | 48h | 48h |
| 10 | 3.7 | Cost/Budget | manual | 6d | 2014-12-28 A | 2015-01-02 A |  | 100% |  |  |  | Noah; Rishal | 96h | 96h |
| 11 | 4 | **Project Proposal** |  | 42d | 2015-01-03 A | 2015-02-13 A | 3 | 100% |  |  |  | Digital Dash Team | 632h | 632h |
| 12 | 4.1 | Presentation Draft | manual | 1d | 2015-01-03 A | 2015-01-03 A |  | 100% |  |  | start no earlier than 2015-01-03 | Rishal | 8h | 8h |
| 13 | 4.2 | Review Presentation | manual | 7d | 2015-01-04 A | 2015-01-10 A | 12 | 100% |  |  | start no earlier than 2015-01-04 | Digital Dash Team | 56h | 56h |
| 14 | 4.3 | Revise & Finalize Presentation | manual | 6d | 2015-01-13 A | 2015-01-18 A | 13 | 100% |  |  |  | Digital Dash Team | 48h | 48h |
| 15 | 4.4 | Present to Sponsers | manual | 1d | 2015-01-21 A | 2015-01-21 A | 14 | 100% |  |  |  | Digital Dash Team | 8h | 8h |
| 16 | 4.5 | Documentation 1st Draft | manual | 5d | 2015-01-23 A | 2015-01-27 A |  | 100% |  |  |  | Noah | 40h | 40h |
| 17 | 4.6 | Document Revision | manual | 5d | 2015-01-28 A | 2015-02-01 A |  | 100% |  |  |  | Digital Dash Team | 40h | 40h |
| 18 | 4.7 | Documentation Final | manual | 12d | 2015-02-02 A | 2015-02-13 A |  | 100% |  |  |  | Digital Dash Team | 96h | 96h |
| 19 | 5 | **Parts Order** |  | 8d | 2015-01-23 A | 2015-01-30 | 15 | 71% | 2.34d | 0d |  | Digital Dash Team | 216h | 113.2h |
| 20 | 5.1 | Create BOM | manual | 4d | 2015-01-23 A | 2015-01-26 A |  | 100% |  |  |  | Rishal | 32h | 32h |
| 21 | 5.2 | Revise & Review BOM | manual | 1d | 2015-01-29 A | 2015-01-29 | 20 | 35% | 0.65d |  |  | Digital Dash Team | 8h | 2.8h |
| 22 | 5.3 | Finalize BOM | manual | 1d | 2015-01-30 | 2015-01-30 | 21 |  |  |  |  | Digital Dash Team | 8h |  |
| 23 | 5.4 | Inquire Sample Parts | manual | 7d | 2015-01-23 A | 2015-01-29 A |  | 100% |  |  |  | Sean | 56h | 56h |
| 24 | 5.5 | Order Parts | manual | 7d | 2015-01-23 A | 2015-01-29 |  | 40% | 4.2d |  |  | Chad | 56h | 22.4h |

| ID | WBS | Task | Type | Duration | Start | Finish | Predecessors | Complete | Remaining | Total slack | Resources | Work | Actual work |
| --- | --- | --- | --- | --- | --- | --- | --- | --- | --- | --- | --- | --- | --- |
| 25 | 6 | **Software Design** |  | 22d | 2015-01-24 A | 2015-02-14 |  | 84% | 3.56d | 0d | Chad; Sean | 576h | 264.71h |
| 26 | 6.1 | Develop Algorithms | manual | 2d | 2015-01-24 A | 2015-01-25 A |  | 100% |  |  | Sean | 16h | 16h |
| 27 | 6.2 | Write Pseudocode | manual | 4d | 2015-01-26 A | 2015-01-29 A | 26 | 100% |  |  | Sean | 32h | 32h |
| 28 | 6.3 | Test Code | manual | 2d | 2015-02-13 A | 2015-02-14 A | 27 | 100% |  |  | Chad; Sean | 32h | 32h |
| 29 | 6.4 | Debug Code | manual | 4d | 2015-01-31 A | 2015-02-03 A | 28 | 100% |  |  | Chad; Sean | 64h | 64h |
| 30 | 6.5 | Verify Code | manual | 3d | 2015-02-04 A | 2015-02-06 | 29 | 75% | 0.75d |  | Chad; Sean | 48h | 36h |
| 31 | 6.6 | Intergrate Code | manual | 2d | 2015-02-06 | 2015-02-07 | 30 |  |  |  | Chad; Sean | 32h |  |
| 32 | 7 | **Prototype Hardware** |  | 13d | 2015-01-24 A | 2015-02-05 A |  | 100% |  |  | Jaime; Noah; Rishal | 624h | 624h |
| 33 | 7.1 | Schematic Design | manual | 5d | 2015-01-24 A | 2015-01-28 A |  | 100% |  |  | Jaime; Noah; Rishal | 120h | 120h |
| 34 | 7.2 | Build Prototype | manual | 4d | 2015-01-29 A | 2015-02-01 A | 33 | 100% |  |  | Jaime; Noah; Rishal | 96h | 96h |
| 35 | 7.3 | Debug/Verify | manual | 4d | 2015-02-02 A | 2015-02-05 A | 34 | 100% |  |  | Jaime; Noah; Rishal | 96h | 96h |
| 36 | 8 | **Prototype Enclosure** |  | 8d | 2015-02-28 | 2015-03-07 | 54 |  |  | 0d | Jaime | 192h |  |
| 37 | 8.1 | Design | manual | 2d | 2015-02-28 | 2015-03-01 | 54 |  |  |  | Jaime | 16h |  |
| 38 | 8.2 | Build Prototype | manual | 2d | 2015-03-02 | 2015-03-03 | 37 |  |  |  | Jaime | 16h |  |
| 39 | 8.3 | Test Enclosure | manual | 3d | 2015-03-04 | 2015-03-06 | 38 |  |  |  | Jaime; Noah; Rishal | 72h |  |
| 40 | 8.4 | Finalize | manual | 1d | 2015-03-07 | 2015-03-07 | 39 |  |  |  | Jaime; Noah; Rishal | 24h |  |
| 41 | 9 | **Prototype Design Implementation** |  | 5d | 2015-03-08 | 2015-03-12 | 39 |  |  | 0d | Digital Dash Team | 240h |  |
| 42 | 9.1 | Intergrate Full System | manual | 1d | 2015-03-08 | 2015-03-08 | 31, 35, 54, 40 |  |  |  | Chad; Jaime; Noah; Rishal; Sean | 40h |  |
| 43 | 9.2 | Test Full System | manual | 1d | 2015-03-09 | 2015-03-09 | 42 |  |  |  | Chad; Jaime; Noah; Rishal; Sean | 40h |  |
| 44 | 9.3 | Validate | manual | 1d | 2015-03-10 | 2015-03-10 | 43 |  |  |  | Chad; Jaime; Noah; Rishal; Sean | 40h |  |
| 45 | 9.4 | Debug/Verify | manual | 2d | 2015-03-11 | 2015-03-12 | 44 |  |  |  | Chad; Jaime; Noah; Rishal; Sean | 80h |  |
| 46 | 10 | **PCB Layout** |  | 15d | 2015-04-01 A | 2015-04-15 | 34 | 14% | 12.9d | 0d | Jaime; Noah; Rishal | 616h | 67.2h |
| 47 | 10.1 | Design First Layout | manual | 3d | 2015-04-01 A | 2015-04-03 | 34 | 70% | 0.9d |  | Rishal | 24h | 16.8h |
| 48 | 10.2 | Review Design | manual | 2d | 2015-04-04 | 2015-04-05 | 47 |  |  |  | Jaime; Noah; Rishal | 48h |  |
| 49 | 10.3 | Board Improvements | manual | 2d | 2015-04-06 | 2015-04-07 | 48 |  |  |  | Jaime; Noah; Rishal | 48h |  |
| 50 | 10.4 | Finalize Board | manual | 1d | 2015-04-08 | 2015-04-08 | 49 |  |  |  | Jaime; Noah; Rishal | 24h |  |
| 51 | 10.5 | Order PCB Board | manual | 7d | 2015-04-09 | 2015-04-15 | 50 |  |  |  | Jaime; Rishal | 112h |  |

| ID | WBS | Task | Type | Duration | Start | Finish | Predecessors | Total slack | Resources | Work |
| --- | --- | --- | --- | --- | --- | --- | --- | --- | --- | --- |
| 52 | 11 | **Final Hardware Build** |  | 6d | 2015-04-16 | 2015-04-21 | 51 | 0d | Jaime; Noah; Rishal | 288h |
| 53 | 11.1 | Solder Board | manual | 4d | 2015-04-16 | 2015-04-19 | 51 |  | Jaime; Noah; Rishal | 96h |
| 54 | 11.2 | Debug/Verify | manual | 2d | 2015-04-20 | 2015-04-21 | 53 |  | Jaime; Noah; Rishal | 48h |
| 55 | 12 | **Final Encloure** |  | 6d | 2015-04-21 | 2015-04-26 | 54 | 0d | Digital Dash Team | 168h |
| 56 | 12.1 | Design | manual | 5d | 2015-04-21 | 2015-04-25 | 54 |  | Jaime | 40h |
| 57 | 12.2 | Build Prototype | manual | 5d | 2015-04-22 | 2015-04-26 | 56 |  | Jaime | 40h |
| 58 | 12.3 | Test Enclosure | manual | 3d | 2015-04-23 | 2015-04-25 | 57 |  | Digital Dash Team | 24h |
| 59 | 12.4 | Finalize | manual | 2d | 2015-04-24 | 2015-04-25 | 58 |  | Digital Dash Team | 16h |
| 60 | 13 | **Operation Manuals** |  | 113d | 2015-02-07 | 2015-05-30 | 30, 35 | 0d | Digital Dash Team | 1904h |
| 61 | 13.1 | Create First Draft | manual | 10d | 2015-02-07 | 2015-02-16 | 30 |  | Rishal | 80h |
| 62 | 13.2 | Add Software Documentation | manual | 20d | 2015-02-17 | 2015-03-08 | 61 |  | Chad; Sean | 320h |
| 63 | 13.3 | Add Hardware Documentation | manual | 20d | 2015-02-17 | 2015-03-08 | 61 |  | Noah; Rishal | 320h |
| 64 | 13.4 | Add Enclosure Documentation | manual | 20d | 2015-02-17 | 2015-03-08 | 61 |  | Jaime | 160h |
| 65 | 13.5 | Review and Revise | manual | 10d | 2015-03-09 | 2015-03-18 | 64 |  | Digital Dash Team | 80h |
| 66 | 13.6 | Finalize | manual | 5d | 2015-05-26 | 2015-05-30 | 65 |  | Digital Dash Team | 40h |
| 67 | 14 | **Poster Presentation** |  | 12d | 2015-05-25 | 2015-06-05 |  |  | Digital Dash Team | 192h |
| 68 | 14.1 | Create First Draft | manual | 5d | 2015-05-25 | 2015-05-29 |  |  | Digital Dash Team | 40h |
| 69 | 14.2 | Review and Revise | manual | 5d | 2015-05-30 | 2015-06-03 |  |  | Digital Dash Team | 40h |
| 70 | 14.3 | Final Draft | manual | 1d | 2015-06-04 | 2015-06-04 |  |  | Digital Dash Team | 8h |
| 71 | 14.4 | Presentation | manual | 1d | 2015-06-05 | 2015-06-05 |  |  | Digital Dash Team | 8h |
